# Assignment7Baseline(group)

Schedule from MS Project, 2024-10-31 to 2025-10-22, status date 2024-12-11, costs in $, A marks actual dates.

## Calendars

- Standard: Mon-Fri 08:00-12:00, 13:00-17:00; Sat-Sun off.

## Resources

| Resource | Unit | Rate | Cost per use |
| --- | --- | --- | --- |
| Thin Client | Units | 200 | 20 |
| Wire | Feet | 50 | 10 |
| FireWall | Units | 20 | 5 |
| It Technitian |  | 85 |  |
| Network Admin |  | 140 |  |
| Helpdesk |  | 70 |  |
| Tester |  | 83 |  |
| Trainer |  | 100 |  |
| Project Manager |  | 40 |  |

## Schedule

| ID | WBS | Task | Type | Duration | Start | Finish | Predecessors | Complete | Baseline 1 start | Baseline 1 finish | Resources | Work | Actual work | Cost | Actual cost | Supervisor |
| --- | --- | --- | --- | --- | --- | --- | --- | --- | --- | --- | --- | --- | --- | --- | --- | --- |
| 1 | 1 | Project Start | milestone | 0d | 2024-10-31 A | 2024-10-31 A |  | 100% | 2024-10-31 | 2024-10-31 |  |  |  |  |  |  |
| 2 | 2 | **Research** |  | 21d | 2024-10-31 A | 2024-11-28 A |  | 100% | 2024-10-31 | 2024-11-28 |  | 344h | 344h | 34,956 | 34,956 |  |
| 3 | 2.1 | Determine project scope |  | 5d | 2024-10-31 A | 2024-11-06 A |  | 100% | 2024-10-31 | 2024-11-06 | It Technitian; Network Admin; Project Manager | 120h | 120h | 10,600 | 10,600 |  |
| 4 | 2.2 | Conduct needs analysis |  | 3d | 2024-11-07 A | 2024-11-11 A | 3 | 100% | 2024-11-07 | 2024-11-11 | It Technitian; Network Admin | 48h | 48h | 5,500 | 5,500 |  |
| 5 | 2.3 | Draft preliminary software specifications |  | 4d | 2024-11-12 A | 2024-11-15 A | 4 | 100% | 2024-11-12 | 2024-11-15 | Network Admin | 32h | 32h | 4,480 | 4,480 |  |
| 6 | 2.4 | Define preliminary resources |  | 2d | 2024-11-18 A | 2024-11-19 A | 5 | 100% | 2024-11-18 | 2024-11-19 | It Technitian; Network Admin | 32h | 32h | 3,600 | 3,600 |  |
| 7 | 2.5 | Conduct market research on available thin clients |  | 4d | 2024-11-20 A | 2024-11-25 A | 6 | 100% | 2024-11-20 | 2024-11-25 | It Technitian [300%]; Tester [110%] | 64h | 64h | 5,376 | 5,376 |  |
| 8 | 2.6 | Analyze existing infrastructure for compatibility |  | 3d | 2024-11-26 A | 2024-11-28 A | 7 | 100% | 2024-11-26 | 2024-11-28 | It Technitian; Network Admin | 48h | 48h | 5,400 | 5,400 |  |
| 9 | 3 | **Planning** |  | 19.25d | 2024-11-29 A | 2024-12-26 A |  | 100% | 2024-11-29 | 2024-12-26 |  | 184h | 184h | 11,280 | 11,280 |  |
| 10 | 3.1 | Develop preliminary budget |  | 5d | 2024-11-29 A | 2024-12-05 A | 8 | 100% | 2024-11-29 | 2024-12-05 | Project Manager | 40h | 40h | 1,600 | 1,600 |  |
| 11 | 3.2 | Develop delivery timeline |  | 3d | 2024-12-06 A | 2024-12-10 A | 10 | 100% | 2024-12-06 | 2024-12-10 | Project Manager | 24h | 24h | 960 | 960 |  |
| 12 | 3.3 | Review software specifications/budget with team |  | 2.5d | 2024-12-11 A | 2024-12-17 A | 11 | 100% | 2024-12-11 | 2024-12-17 | Network Admin; Project Manager | 32h | 32h | 2,880 | 2,880 |  |
| 13 | 3.4 | Incorporate feedback on software specifications |  | 3.5d | 2024-12-13 A | 2024-12-18 A | 12 | 100% | 2024-12-13 | 2024-12-18 | It Technitian [300%]; Network Admin [300%] | 32h | 32h | 3,600 | 3,600 |  |
| 14 | 3.5 | Obtain approvals to proceed |  | 3d | 2024-12-17 A | 2024-12-19 A | 13 | 100% | 2024-12-17 | 2024-12-19 | Project Manager | 24h | 24h | 960 | 960 |  |
| 15 | 3.6 | Create risk management plan |  | 1d | 2024-12-20 A | 2024-12-25 A | 14 | 100% | 2024-12-20 | 2024-12-25 | Project Manager | 8h | 8h | 320 | 320 |  |
| 16 | 3.7 | Develop change management plan |  | 3d | 2024-12-23 A | 2024-12-26 A | 15 | 100% | 2024-12-23 | 2024-12-26 | Project Manager | 24h | 24h | 960 | 960 |  |
| 17 | 4 | **Purchasing** |  | 34.5d | 2024-12-20 A | 2025-02-06 A |  | 100% | 2024-12-20 | 2025-02-06 |  | 224h | 224h | 21,000 | 21,000 |  |
| 18 | 4.1 | Secure project sponsorship |  | 2d | 2024-12-20 A | 2024-12-27 A | 14 | 100% | 2024-12-20 | 2024-12-27 | Project Manager | 16h | 16h | 640 | 640 |  |
| 19 | 4.2 | Secure core resources |  | 4d | 2024-12-24 A | 2025-01-15 A | 18 | 100% | 2024-12-24 | 2025-01-15 | Network Admin | 32h | 32h | 4,480 | 4,480 |  |
| 20 | 4.3 | Secure required resources |  | 3.5d | 2024-12-30 A | 2025-01-16 A | 19 | 100% | 2024-12-30 | 2025-01-16 | Network Admin; Project Manager | 48h | 48h | 4,320 | 4,320 |  |
| 21 | 4.4 | Obtain quotes from vendors |  | 3d | 2025-01-02 A | 2025-01-17 A | 20 | 100% | 2025-01-02 | 2025-01-17 | Project Manager | 24h | 24h | 960 | 960 |  |
| 22 | 4.5 | Evaluate vendors and select suppliers |  | 4d | 2025-01-07 A | 2025-01-28 A | 21 | 100% | 2025-01-07 | 2025-01-28 | It Technitian; Network Admin | 64h | 64h | 7,200 | 7,200 |  |
| 23 | 4.6 | Procure hardware |  | 5d | 2025-01-13 A | 2025-02-06 A | 22 | 100% | 2025-01-13 | 2025-02-06 | It Technitian | 40h | 40h | 3,400 | 3,400 |  |
| 24 | 5 | **Installation and Configuration** |  | 105.5d | 2025-02-11 A | 2025-07-08 A |  | 100% | 2025-02-11 | 2025-07-08 |  | 336h | 336h | 38,320 | 38,320 |  |
| 25 | 5.1 | Develop code |  | 5d | 2025-02-11 A | 2025-03-04 A | 23 | 100% | 2025-02-11 | 2025-03-04 | It Technitian; Network Admin | 80h | 80h | 9,000 | 9,000 | Pawan |
| 26 | 5.2 | Install/deploy software |  | 5d | 2025-03-05 A | 2025-03-26 A | 25 | 100% | 2025-03-05 | 2025-03-26 | It Technitian; Network Admin | 80h | 80h | 9,000 | 9,000 | Kiet |
| 27 | 5.3 | Configure required systems |  | 4d | 2025-03-27 A | 2025-04-15 A | 26 | 100% | 2025-03-27 | 2025-04-15 | It Technitian; Network Admin | 64h | 64h | 7,200 | 7,200 | Makar |
| 28 | 5.4 | Set up user accounts and permissions |  | 3d | 2025-04-16 A | 2025-04-29 A | 27 | 100% | 2025-04-16 | 2025-04-29 | Helpdesk [110%]; Network Admin | 48h | 48h | 5,040 | 5,040 | Gaurav |
| 29 | 5.5 | Perform initial network configuration for thin clients |  | 4d | 2025-04-30 A | 2025-05-15 A | 28 | 100% | 2025-04-30 | 2025-05-15 | Network Admin | 32h | 32h | 4,480 | 4,480 | Gaurav |
| 30 | 5.6 | Document configuration settings |  | 4d | 2025-05-20 A | 2025-07-08 A | 29 | 100% | 2025-05-20 | 2025-07-08 | It Technitian; Network Admin | 32h | 32h | 3,600 | 3,600 | Kiet |

Notes:
- 1: Project Start
- 13: Network Admin intentionally over-scheduled to demonstrate task and resource management.
- 28: Setup user accounts is taking longer than estimate

| ID | WBS | Task | Type | Duration | Start | Finish | Predecessors | Complete | Remaining | Baseline 1 start | Baseline 1 finish | Total slack | Free slack | Resources | Work | Actual work | Cost | Actual cost | Supervisor |
| --- | --- | --- | --- | --- | --- | --- | --- | --- | --- | --- | --- | --- | --- | --- | --- | --- | --- | --- | --- |
| 31 | 6 | **Testing** |  | 105.5d | 2025-03-05 A | 2025-07-30 A |  | 100% |  | 2025-03-05 | 2025-07-30 |  |  |  | 396h | 396h | 37,964 | 37,964 |  |
| 32 | 6.1 | Develop unit test plans using product specifications |  | 9.5d | 2025-03-05 A | 2025-07-15 A | 28 | 100% |  | 2025-03-05 | 2025-03-20 |  |  | Tester | 76h | 76h | 6,308 | 6,308 | Pawan |
| 33 | 6.2 | Unit Testing |  | 5d | 2025-03-25 A | 2025-04-15 A | 32 | 100% |  | 2025-03-25 | 2025-04-15 |  |  | Tester | 40h | 40h | 3,320 | 3,320 | Makar |
| 34 | 6.3 | Test component modules to product specifications |  | 5d | 2025-04-16 A | 2025-05-07 A | 33 | 100% |  | 2025-04-16 | 2025-05-07 |  |  | It Technitian; Tester | 80h | 80h | 6,720 | 6,720 |  |
| 35 | 6.4 | Integration Testing |  | 7d | 2025-05-08 A | 2025-06-10 A | 34 | 100% |  | 2025-05-08 | 2025-06-10 |  |  | Network Admin; Tester | 80h | 80h | 8,920 | 8,920 |  |
| 36 | 6.5 | Deliverable * Integration testing complete |  | 2d | 2025-06-11 A | 2025-06-18 A | 35 | 100% |  | 2025-06-11 | 2025-06-18 |  |  | Network Admin; Tester | 32h | 32h | 3,568 | 3,568 |  |
| 37 | 6.6 | Conduct performance testing on thin clients |  | 6d | 2025-06-19 A | 2025-07-16 A | 36 | 100% |  | 2025-06-19 | 2025-07-16 |  |  | Tester; Network Admin | 64h | 64h | 7,136 | 7,136 |  |
| 38 | 6.7 | Record and analyze test results |  | 3d | 2025-07-17 A | 2025-07-30 A | 37 | 100% |  | 2025-07-17 | 2025-07-30 |  |  | Tester | 24h | 24h | 1,992 | 1,992 |  |
| 39 | 7 | Installation Complete | milestone | 0d | 2025-07-16 A | 2025-07-16 A | 22, 29, 37 | 100% |  | 2025-07-16 | 2025-07-16 |  |  |  |  |  |  |  |  |
| 40 | 8 | **Training** |  | 19.5d | 2025-07-17 A | 2025-08-13 |  | 20% | 15.55d | 2025-07-17 | 2025-08-13 | 0.5d |  |  | 79.2h | 24h | 10,896 | 4,800 |  |
| 41 | 8.1 | Prepare training manuals |  | 3d | 2025-07-17 A | 2025-07-30 A | 39 | 100% |  | 2025-07-17 | 2025-07-30 |  |  | Trainer | 24h | 24h | 4,800 | 4,800 |  |
| 42 | 8.2 | Training at Location 1 |  | 10d | 2025-07-30 | 2025-08-13 | 41 |  |  | 2025-07-31 | 2025-08-13 | 0.5d | 0d | Trainer [110%]; Network Admin [110%] | 26.4h |  | 2,640 |  |  |
| 43 | 8.3 | Training at location 2 |  | 1.8d | 2025-07-31 | 2025-08-07 | 41 |  |  | 2025-07-31 | 2025-08-13 | 4.2d |  | Trainer [110%]; Network Admin | 28.8h |  | 3,456 |  |  |
| 44 | 8.4 | Training Complete | milestone | 0d | 2025-08-13 | 2025-08-13 | 42, 43 |  |  | 2025-08-13 | 2025-08-13 | 0.5d |  |  |  |  |  |  |  |
| 45 | 9 | **Cybersecurity** |  | 49.5d | 2025-08-14 | 2025-10-22 |  |  |  | 2025-08-14 | 2025-11-11 | 0d |  |  | 224h |  | 25,160 |  |  |
| 46 | 9.1 | Identify modular/tiered design parameters |  | 3d | 2025-08-14 | 2025-08-27 | 40 |  |  | 2025-08-14 | 2025-08-27 | 0d |  | Network Admin | 24h |  | 3,360 |  |  |
| 47 | 9.2 | Review Help documentation |  | 4d | 2025-08-28 | 2025-09-16 | 46 |  |  | 2025-08-28 | 2025-09-16 | 0d |  | Helpdesk | 32h |  | 2,240 |  |  |
| 48 | 9.3 | Develop software delivery mechanism |  | 5d | 2025-09-17 | 2025-10-08 | 47 |  |  | 2025-09-17 | 2025-10-08 | 0d |  | It Technitian; Network Admin | 80h |  | 9,000 |  |  |
| 49 | 9.4 | Implement access controls for thin client environment |  | 1.33d | 2025-10-09 | 2025-10-15 | 48 |  |  | 2025-10-09 | 2025-10-28 | 5.17d |  | It Technitian [300%]; Network Admin [300%] | 64h |  | 7,200 |  |  |
| 50 | 9.5 | Conduct security audit for thin client configuration |  | 3d | 2025-10-09 | 2025-10-22 | 47, 48 |  |  | 2025-10-29 | 2025-11-11 | 0d |  | Network Admin | 24h |  | 3,360 |  |  |
| 51 | 9.6 | Project Completed | milestone | 0d | 2025-10-22 | 2025-10-22 | 50, 39 |  |  | 2025-11-11 | 2025-11-11 | 0d |  |  |  |  |  |  |  |

Notes:
- 42: Completed training time was greater than estimated
- 43: Training 2 and all future training tasks allocated an additional 20% increase in time, due to previous training session taking longer than estimated.
- 49: Increased resource assignment to 300% capacity, causing an overscheduling alert
