# Assignment7Baseline(group)

Schedule from MS Project, 2024-10-31 to 2025-04-25, status date 2024-12-11, costs in $, A marks actual dates.

## Calendars

- Standard: Mon-Fri 08:00-12:00, 13:00-17:00; Sat-Sun off.

## Resources

| Resource | Unit | Rate | Cost per use |
| --- | --- | --- | --- |
| Thin Client | M | 200 | 20 |
| Wire |  | 50 | 10 |
| FireWall |  | 20 | 5 |
| It Technitian |  | 25 |  |
| Network Admin |  | 40 |  |
| Helpdesk |  | 15 |  |
| Tester |  | 25 |  |
| Trainer |  | 30 |  |
| Project Manager |  | 40 |  |

## Schedule

| ID | WBS | Task | Duration | Start | Finish | Predecessors | Complete | Remaining | Baseline start | Baseline finish | Baseline duration | Total slack | Free slack | Resources | Work | Actual work | Cost | Actual cost |
| --- | --- | --- | --- | --- | --- | --- | --- | --- | --- | --- | --- | --- | --- | --- | --- | --- | --- | --- |
| 1 | 1 | **Research** | 21d | 2024-10-31 A | 2024-11-28 A |  | 100% |  | 2024-10-31 | 2024-11-28 | 21d |  |  |  | 344h | 344h | 11,340 | 11,340 |
| 2 | 1.1 | Determine project scope | 5d | 2024-10-31 A | 2024-11-06 A |  | 100% |  | 2024-10-31 | 2024-11-06 | 5d |  |  | It Technitian; Network Admin; Project Manager | 120h | 120h | 4,200 | 4,200 |
| 3 | 1.2 | Conduct needs analysis | 3d | 2024-11-07 A | 2024-11-11 A | 2 | 100% |  | 2024-11-07 | 2024-11-11 | 3d |  |  | It Technitian; Network Admin | 48h | 48h | 1,660 | 1,660 |
| 4 | 1.3 | Draft preliminary software specifications | 4d | 2024-11-12 A | 2024-11-15 A | 3 | 100% |  | 2024-11-12 | 2024-11-15 | 4d |  |  | Network Admin | 32h | 32h | 1,280 | 1,280 |
| 5 | 1.4 | Define preliminary resources | 2d | 2024-11-18 A | 2024-11-19 A | 4 | 100% |  | 2024-11-18 | 2024-11-19 | 2d |  |  | It Technitian; Network Admin | 32h | 32h | 1,040 | 1,040 |
| 6 | 1.5 | Conduct market research on available thin clients | 4d | 2024-11-20 A | 2024-11-25 A | 5 | 100% |  | 2024-11-20 | 2024-11-25 | 4d |  |  | It Technitian; Tester | 64h | 64h | 1,600 | 1,600 |
| 7 | 1.6 | Analyze existing infrastructure for compatibility | 3d | 2024-11-26 A | 2024-11-28 A | 6 | 100% |  | 2024-11-26 | 2024-11-28 | 3d |  |  | It Technitian; Network Admin | 48h | 48h | 1,560 | 1,560 |
| 8 | 2 | **Planning** | 19.25d | 2024-11-29 A | 2024-12-26 |  | 54% | 8.87d | 2024-11-29 | 2024-12-25 | 19d | 86.75d |  |  | 184h | 106h | 7,120 | 4,060 |
| 9 | 2.1 | Develop preliminary budget | 5d | 2024-11-29 A | 2024-12-05 | 7 | 25% | 3.75d | 2024-11-29 | 2024-12-05 | 5d | 1.5d | 0d | Project Manager | 40h | 10h | 1,600 | 400 |
| 10 | 2.2 | Develop delivery timeline | 3d | 2024-12-06 A | 2024-12-10 | 9 | 50% | 1.5d | 2024-12-06 | 2024-12-10 | 3d | 1.5d | 0d | Project Manager | 24h | 12h | 960 | 480 |
| 11 | 2.3 | Review software specifications/budget with team | 2d | 2024-12-11 A | 2024-12-12 | 10 | 75% | 0.5d | 2024-12-11 | 2024-12-12 | 2d | 1.5d | 0d | Network Admin; Project Manager | 32h | 24h | 1,280 | 960 |
| 12 | 2.4 | Incorporate feedback on software specifications | 2d | 2024-12-13 A | 2024-12-16 | 11 | 75% | 0.5d | 2024-12-13 | 2024-12-16 | 2d | 1.5d | 0d | It Technitian; Network Admin | 32h | 24h | 1,040 | 780 |
| 13 | 2.5 | Obtain approvals to proceed | 3d | 2024-12-17 A | 2024-12-19 | 12 | 50% | 1.5d | 2024-12-17 | 2024-12-19 | 3d | 0.75d | 0d | Project Manager | 24h | 12h | 960 | 480 |
| 14 | 2.6 | Create risk management plan | 1d | 2024-12-20 A | 2024-12-25 | 13 | 75% | 0.25d | 2024-12-20 | 2024-12-20 | 1d | 0d |  | Project Manager | 8h | 6h | 320 | 240 |
| 15 | 2.7 | Develop change management plan | 3d | 2024-12-23 A | 2024-12-26 | 14 | 75% | 0.75d | 2024-12-23 | 2024-12-25 | 3d | 86.75d |  | Project Manager | 24h | 18h | 960 | 720 |
| 16 | 3 | **Purchasing** | 21d | 2024-12-20 A | 2025-01-17 |  | 53% | 9.9d | 2024-12-20 | 2025-01-17 | 21d | 0d |  |  | 224h | 126h | 7,880 | 4,500 |
| 17 | 3.1 | Secure project sponsorship | 2d | 2024-12-20 A | 2024-12-27 | 13 | 25% | 1.5d | 2024-12-20 | 2024-12-23 | 2d | 0d |  | Project Manager | 16h | 4h | 640 | 160 |
| 18 | 3.2 | Secure core resources | 4d | 2024-12-24 A | 2025-01-02 | 17 | 50% | 2d | 2024-12-24 | 2024-12-27 | 4d | 0d |  | Network Admin | 32h | 16h | 1,280 | 640 |
| 19 | 3.3 | Secure required resources | 3.75d | 2024-12-30 A | 2025-01-06 | 18 | 60% | 1.5d | 2024-12-30 | 2025-01-01 | 3d | 0d |  | Network Admin; Project Manager | 48h | 36h | 1,920 | 1,440 |
| 20 | 3.4 | Obtain quotes from vendors | 3d | 2025-01-02 A | 2025-01-07 | 19 | 75% | 0.75d | 2025-01-02 | 2025-01-06 | 3d | 1.25d | 0d | Project Manager | 24h | 18h | 960 | 720 |
| 21 | 3.5 | Evaluate vendors and select suppliers | 4d | 2025-01-07 A | 2025-01-10 | 20 | 50% | 2d | 2025-01-07 | 2025-01-10 | 4d | 2.5d | 0d | It Technitian; Network Admin | 64h | 32h | 2,080 | 1,040 |
| 22 | 3.6 | Procure hardware | 5d | 2025-01-13 A | 2025-01-17 | 21 | 50% | 2.5d | 2025-01-13 | 2025-01-17 | 5d | 0d |  | It Technitian | 40h | 20h | 1,000 | 500 |
| 23 | 4 | **Installation and Configuration** | 34d | 2025-01-20 | 2025-03-06 |  |  |  |  |  |  | 0d |  |  | 336h |  | 10,920 |  |
| 24 | 4.1 | Develop code | 5d | 2025-01-20 | 2025-01-24 | 22 |  |  |  |  |  | 0d |  | It Technitian; Network Admin | 80h |  | 2,600 |  |
| 25 | 4.2 | Install/deploy software | 5d | 2025-01-27 | 2025-01-31 | 24 |  |  |  |  |  | 36d | 0d | It Technitian; Network Admin | 80h |  | 2,600 |  |
| 26 | 4.3 | Configure required systems | 4d | 2025-02-03 | 2025-02-06 | 25 |  |  |  |  |  | 36d | 0d | It Technitian; Network Admin | 64h |  | 2,080 |  |
| 27 | 4.4 | Set up user accounts and permissions | 3d | 2025-02-07 | 2025-02-11 | 26 |  |  |  |  |  | 36d | 0d | Helpdesk; Network Admin | 48h |  | 1,320 |  |
| 28 | 4.5 | Perform initial network configuration for thin clients | 4d | 2025-02-12 | 2025-03-04 | 27 |  |  |  |  |  | 36d | 0d | Network Admin | 32h |  | 1,280 |  |
| 29 | 4.6 | Document configuration settings | 2d | 2025-03-05 | 2025-03-06 | 28 |  |  |  |  |  | 36d |  | It Technitian; Network Admin | 32h |  | 1,040 |  |

| ID | WBS | Task | Duration | Start | Finish | Predecessors | Total slack | Free slack | Resources | Work | Cost |
| --- | --- | --- | --- | --- | --- | --- | --- | --- | --- | --- | --- |
| 30 | 5 | **Testing** | 28d | 2025-01-27 | 2025-03-05 |  | 0d |  |  | 352h | 10,120 |
| 31 | 5.1 | Develop unit test plans using product specifications | 4d | 2025-01-27 | 2025-01-30 | 24 | 0d |  | Tester | 32h | 800 |
| 32 | 5.2 | Unit Testing | 5d | 2025-01-31 | 2025-02-06 | 31 | 0d |  | Tester | 40h | 1,000 |
| 33 | 5.3 | Test component modules to product specifications | 5d | 2025-02-07 | 2025-02-13 | 32 | 0d |  | It Technitian; Tester | 80h | 2,000 |
| 34 | 5.4 | Integration Testing | 5d | 2025-02-14 | 2025-02-20 | 33 | 0d |  | Network Admin; Tester | 80h | 2,600 |
| 35 | 5.5 | Deliverable * Integration testing complete | 2d | 2025-02-21 | 2025-02-24 | 34 | 0d |  | Network Admin; Tester | 32h | 1,040 |
| 36 | 5.6 | Conduct performance testing on thin clients | 4d | 2025-02-25 | 2025-02-28 | 35 | 0d |  | Tester; Network Admin | 64h | 2,080 |
| 37 | 5.7 | Record and analyze test results | 3d | 2025-03-03 | 2025-03-05 | 36 | 0d |  | Tester | 24h | 600 |
| 38 | 6 | **Training** | 113d | 2024-10-31 | 2025-04-07 |  | 0d |  |  | 128h | 3,840 |
| 39 | 6.1 | **Location 1 Training** | 10d | 2025-03-06 | 2025-03-19 |  | 13d |  |  | 80h | 2,400 |
| 40 | 6.1.1 | Develop training specifications for end users | 3d | 2025-03-06 | 2025-03-10 | 37 | 13d | 0d | Trainer | 24h | 720 |
| 41 | 6.1.2 | Develop training materials | 4d | 2025-03-11 | 2025-03-14 | 40 | 13d | 0d | Trainer | 32h | 960 |
| 42 | 6.1.3 | Conduct training usability study | 3d | 2025-03-17 | 2025-03-19 | 41 | 13d |  | Trainer | 24h | 720 |
| 43 | 6.2 | **Location 2 Training** | 113d | 2024-10-31 | 2025-04-07 |  | 0d |  |  | 48h | 1,440 |
| 44 | 6.2.1 | Identify training delivery methodology | 2d | 2025-03-20 | 2025-03-21 | 37 | 0d |  | Trainer | 16h | 480 |
| 45 | 6.2.2 | Finalize training materials | 3d | 2025-04-03 | 2025-04-07 | 44 | 0d |  | Trainer | 24h | 720 |
| 46 | 6.2.3 | Training materials complete | 1d | 2024-10-31 | 2024-10-31 |  | 112d |  | Trainer | 8h | 240 |
| 47 | 7 | **Cybersecurity** | 113d | 2024-11-20 | 2025-04-25 |  | 0d |  |  | 208h | 6,840 |
| 48 | 7.1 | Identify modular/tiered design parameters | 3d | 2025-04-08 | 2025-04-10 | 38 | 0d |  | Network Admin | 24h | 960 |
| 49 | 7.2 | Review Help documentation | 2d | 2025-04-11 | 2025-04-14 | 48 | 0d |  | Helpdesk | 16h | 240 |
| 50 | 7.3 | Develop software delivery mechanism | 5d | 2025-04-15 | 2025-04-21 | 49 | 0d |  | It Technitian; Network Admin | 80h | 2,600 |
| 51 | 7.4 | Implement access controls for thin client environment | 4d | 2025-04-22 | 2025-04-25 | 50 | 0d |  | It Technitian; Network Admin | 64h | 2,080 |
| 52 | 7.5 | Conduct security audit for thin client configuration | 3d | 2024-11-20 | 2024-11-22 |  | 110d |  | Network Admin | 24h | 960 |
